# Lehong 2019

Schedule from MS Project, 2018-03-01 to 2019-08-21.

## Calendars

- Standard: Mon-Fri 09:00-17:00; Sat-Sun off.

## Resources

| Resource |
| --- |
| Sylvia More |
| Emilia Mohapi |
| Julie Smith |
| Kabelo Mohapi |
| Neo Mohapi |
| Andy Johns |
| Jackie Whiley |
| Blantina Morake |
| Project Support Officer |
| Safety Analyst |
| Risk Analyst |
| Randy Schepers |
| Miles Mchunu |
| Daniel Lee |
| Justine Leakey |
| Derek Rivett |
| Manzi Nisela |
| Amos Mokoena |
| Elias Makoti |
| Ollie Volta |
| Local Inspection Authority |

## Schedule

| ID | WBS | Task | Duration | Start | Finish | Predecessors | Total slack | Free slack | Constraint | Resources | Work |
| --- | --- | --- | --- | --- | --- | --- | --- | --- | --- | --- | --- |
| 1 | 1 | **Lehong 2019** | 385d | 2018-03-01 | 2019-08-21 |  | 0d |  | start no earlier than 2018-03-01 |  | 4712h |
| 2 | 1.1 | **Planning** | 66d | 2018-03-01 | 2018-05-31 |  | 0d |  |  |  | 1256h |
| 3 | 1.1.1 | Deciding on Project Concept | 7d | 2018-03-01 | 2018-03-09 |  | 0d |  | must start on 2018-03-01 | Sylvia More; Emilia Mohapi; Julie Smith; Kabelo Mohapi; Neo Mohapi; Andy Johns; Jackie Whiley | 392h |
| 4 | 1.1.2 | Concept Review | 5d | 2018-03-12 | 2018-03-16 | 3 | 373d |  | start no earlier than 2018-03-09 | Andy Johns | 40h |
| 5 | 1.1.3 | Determining Budget | 14d | 2018-03-16 | 2018-04-04 | 3 | 325d | 6d | start no earlier than 2018-03-16 | Sylvia More; Jackie Whiley | 224h |
| 6 | 1.1.4 | **Engage Contractors** | 40d | 2018-04-06 | 2018-05-31 |  | 319d |  | start no earlier than 2018-03-09 |  | 600h |
| 7 | 1.1.4.1 | Quantify space requirements | 5d | 2018-04-06 | 2018-04-12 | 3 | 354d |  | start no earlier than 2018-04-06 | Andy Johns | 40h |
| 8 | 1.1.4.2 | Contractor Negotiations | 35d | 2018-04-13 | 2018-05-31 | 5 | 319d |  | start no earlier than 2018-04-13 | Sylvia More; Blantina Morake | 560h |
| 9 | 1.2 | **Project Management** | 45d | 2018-06-01 | 2018-08-02 |  | 274d |  |  |  | 360h |
| 10 | 1.2.1 | Communication Strategy | 5d | 2018-06-01 | 2018-06-07 |  | 227d | 0d | start no earlier than 2018-06-01 | Emilia Mohapi | 40h |
| 11 | 1.2.2 | Support Services | 40d | 2018-06-08 | 2018-08-02 |  | 274d |  | start no earlier than 2018-06-08 | Project Support Officer | 320h |
| 12 | 1.3 | **Safety and Environment** | 15d | 2018-08-03 | 2018-08-23 |  | 259d |  |  |  | 240h |
| 13 | 1.3.1 | Safety Analysis Report | 15d | 2018-08-03 | 2018-08-23 |  | 259d |  | start no earlier than 2018-08-03 | Safety Analyst | 120h |
| 14 | 1.3.2 | Probabilistic Risk Assessment | 15d | 2018-08-03 | 2018-08-23 |  | 259d |  | start no earlier than 2018-08-03 | Risk Analyst | 120h |
| 15 | 1.4 | **Design** | 40d | 2018-08-24 | 2018-10-18 |  | 219d |  |  |  | 960h |
| 16 | 1.4.1 | Industrial Design | 40d | 2018-08-24 | 2018-10-18 |  | 219d |  | start no earlier than 2018-08-24 | Randy Schepers | 320h |
| 17 | 1.4.2 | **Mechanical Design** | 40d | 2018-08-24 | 2018-10-18 |  | 219d |  |  |  | 640h |
| 18 | 1.4.2.1 | Production line control software program | 40d | 2018-08-24 | 2018-10-18 |  | 219d |  | start no earlier than 2018-08-24 | Andy Johns | 320h |
| 19 | 1.4.2.2 | Production train design | 40d | 2018-08-24 | 2018-10-18 |  | 219d |  | start no earlier than 2018-08-24 | Miles Mchunu | 320h |
| 20 | 1.5 | **Preconstruction** | 71d | 2018-10-19 | 2019-01-25 |  | 148d |  |  |  | 536h |
| 21 | 1.5.1 | Waste Acceptance Criteria | 15d | 2018-10-19 | 2018-11-08 |  | 204d |  | start no earlier than 2018-10-19 | Project Support Officer | 120h |
| 22 | 1.5.2 | Quality Assurance | 10d | 2018-11-09 | 2018-11-22 |  | 194d |  | start no earlier than 2018-11-09 | Andy Johns | 80h |
| 23 | 1.5.3 | Subcontractor Training | 30d | 2018-11-23 | 2019-01-03 |  | 164d |  | start no earlier than 2018-11-23 | Blantina Morake | 240h |
| 24 | 1.5.4 | Readiness Review | 7d | 2019-01-10 | 2019-01-18 |  | 153d |  | start no earlier than 2019-01-10 | Andy Johns | 56h |
| 25 | 1.5.5 | Site-clearing permission | 5d | 2019-01-21 | 2019-01-25 |  | 148d |  | start no earlier than 2019-01-21 | Project Support Officer | 40h |

| ID | WBS | Task | Duration | Start | Finish | Predecessors | Total slack | Constraint | Resources | Work |
| --- | --- | --- | --- | --- | --- | --- | --- | --- | --- | --- |
| 26 | 1.6 | **Construction** | 70d | 2019-01-28 | 2019-05-03 |  | 78d | start no earlier than 2018-06-29 |  | 560h |
| 27 | 1.6.1 | Site-clearing | 20d | 2019-01-28 | 2019-02-22 |  | 128d | start no earlier than 2019-01-28 | Daniel Lee | 160h |
| 28 | 1.6.2 | **Building of Facility** | 51d | 2019-02-22 | 2019-05-03 |  | 78d |  |  | 400h |
| 29 | 1.6.2.1 | Foundation | 10d | 2019-02-22 | 2019-03-07 |  | 119d | start no earlier than 2019-02-22 | Daniel Lee | 80h |
| 30 | 1.6.2.2 | Structures | 10d | 2019-03-11 | 2019-03-22 |  | 108d | start no earlier than 2019-03-11 | Derek Rivett | 80h |
| 31 | 1.6.2.3 | Roofing | 10d | 2019-03-25 | 2019-04-05 |  | 98d | start no earlier than 2019-03-25 | Justine Leakey | 80h |
| 32 | 1.6.2.4 | Water Proofing | 10d | 2019-04-08 | 2019-04-19 |  | 88d | start no earlier than 2019-04-08 | Manzi Nisela | 80h |
| 33 | 1.6.2.5 | Building Electrification | 10d | 2019-04-22 | 2019-05-03 |  | 78d | start no earlier than 2019-04-22 | Ollie Volta | 80h |
| 34 | 1.7 | **Installation** | 58d | 2019-05-06 | 2019-07-24 |  | 20d |  |  | 624h |
| 35 | 1.7.1 | Install semi-automatic woodworking production train | 20d | 2019-05-06 | 2019-05-31 |  | 58d | start no earlier than 2019-05-06 | Amos Mokoena; Elias Makoti | 320h |
| 36 | 1.7.2 | Paint shop installation | 15d | 2019-05-31 | 2019-06-20 |  | 44d | start no earlier than 2019-05-31 | Amos Mokoena | 120h |
| 37 | 1.7.3 | Hardware Installation | 10d | 2019-06-21 | 2019-07-04 |  | 34d | start no earlier than 2019-06-21 | Ollie Volta | 80h |
| 38 | 1.7.4 | Software Installation | 5d | 2019-07-08 | 2019-07-12 |  | 28d | start no earlier than 2019-07-08 | Andy Johns | 40h |
| 39 | 1.7.5 | Install compressor | 4d | 2019-07-15 | 2019-07-18 |  | 24d | start no earlier than 2019-07-15 | Ollie Volta | 32h |
| 40 | 1.7.6 | Install Air-conditioning | 4d | 2019-07-19 | 2019-07-24 |  | 20d | start no earlier than 2019-07-19 | Ollie Volta | 32h |
| 41 | 1.8 | **Final Inspection** | 15d | 2019-07-25 | 2019-08-14 |  | 5d |  |  | 136h |
| 42 | 1.8.1 | Complete production train inspection | 5d | 2019-07-25 | 2019-07-31 |  | 15d | start no earlier than 2019-07-25 | Andy Johns | 40h |
| 43 | 1.8.2 | Paint shop inspection | 5d | 2019-07-31 | 2019-08-06 |  | 11d | start no earlier than 2019-07-31 | Andy Johns | 40h |
| 44 | 1.8.3 | Building Inspection | 4d | 2019-08-06 | 2019-08-09 |  | 8d | start no earlier than 2019-08-06 | Andy Johns | 32h |
| 45 | 1.8.4 | Final approval | 3d | 2019-08-12 | 2019-08-14 |  | 0d | start no earlier than 2019-08-12 | Local Inspection Authority | 24h |
| 46 | 1.9 | **Commissioning** | 5d | 2019-08-15 | 2019-08-21 |  | 0d |  |  | 40h |
| 47 | 1.9.1 | Production start-up | 5d | 2019-08-15 | 2019-08-21 | 45 | 0d | start no earlier than 2019-08-15 | Andy Johns | 40h |
